Schedule from GanttProject, 2018-01-03 to 2019-01-18.

## Calendars

- Project calendar: Mon-Sun working.

## Schedule

| ID | WBS | Task | Type | Duration | Start | Finish |
| --- | --- | --- | --- | --- | --- | --- |
| 1 | 1 | **Stages** |  | 379d | 2018-01-03 | 2019-01-16 |
| 2 | 1.1 | Preliminary Design |  | 28d | 2018-01-03 | 2018-01-30 |
| 3 | 1.2 | Critical Design |  | 70d | 2018-02-12 | 2018-04-22 |
| 4 | 1.3 | Experiment Building and Testing |  | 45d | 2018-05-21 | 2018-07-04 |
| 5 | 1.4 | Final Experiment Preparations |  | 45d | 2018-07-30 | 2018-09-12 |
| 6 | 1.5 | Launch Campaign |  | 10d | 2018-10-15 | 2018-10-24 |
| 7 | 1.6 | Data Analysis and Reporting |  | 66d | 2018-11-12 | 2019-01-16 |
| 8 | 2 | **Student Experiment Documentation** |  | 367d | 2018-01-15 | 2019-01-16 |
| 9 | 2.1 | SEDv1-0 | milestone | 0d | 2018-01-15 | 2018-01-15 |
| 10 | 2.2 | SEDv1-2 | milestone | 0d | 2018-03-12 | 2018-03-12 |
| 11 | 2.3 | SEDv2-0 | milestone | 0d | 2018-05-14 | 2018-05-14 |
| 12 | 2.4 | SEDv3-0 | milestone | 0d | 2018-07-16 | 2018-07-16 |
| 13 | 2.5 | SEDv4-0 | milestone | 0d | 2018-09-17 | 2018-09-17 |
| 14 | 2.6 | SEDv5-0 |  | 66d | 2018-11-12 | 2019-01-16 |
| 15 | 3 | **Reviews** |  | 243d | 2018-02-05 | 2018-10-05 |
| 16 | 3.1 | Preliminary Design Review (PDR) |  | 5d | 2018-02-05 | 2018-02-09 |
| 17 | 3.2 | Critical Design Review (CDR) |  | 5d | 2018-05-21 | 2018-05-25 |
| 18 | 3.3 | Integration Progress Review (IPR) |  | 5d | 2018-07-23 | 2018-07-27 |
| 19 | 3.4 | Experiment Acceptance Review (EAR) |  | 5d | 2018-10-01 | 2018-10-05 |
| 20 | 4 | **Exam Periods** |  | 376d | 2018-01-08 | 2019-01-18 |
| 21 | 4.1 | Exam Period 1 (EX1) |  | 5d | 2018-01-08 | 2018-01-12 |
| 22 | 4.2 | Exam Period 2 (EX2) |  | 10d | 2018-03-12 | 2018-03-21 |
| 23 | 4.3 | Exam Period 3 (EX3) |  | 8d | 2018-05-23 | 2018-05-30 |
| 24 | 4.4 | Exam Period 4 (EX4) |  | 10d | 2018-08-13 | 2018-08-22 |
| 25 | 4.5 | Exam Period 5 (EX5) |  | 10d | 2018-10-15 | 2018-10-24 |
| 26 | 4.6 | Exam Period 6 (EX6) |  | 5d | 2018-12-17 | 2018-12-21 |
| 27 | 4.7 | Exam Period 7 (EX7) |  | 5d | 2019-01-14 | 2019-01-18 |

| ID | WBS | Task | Type | Duration | Start | Finish |
| --- | --- | --- | --- | --- | --- | --- |
| 28 | 5 | **Electrical Division** |  | 142d | 2018-01-25 | 2018-06-15 |
| 29 | 5.1 | Select pump |  | 2d | 2018-02-22 | 2018-02-23 |
| 30 | 5.2 | Find pump on Swedish vendor site | milestone | 0d | 2018-02-26 | 2018-02-26 |
| 31 | 5.3 | Order pump |  | 30d | 2018-02-26 | 2018-03-27 |
| 32 | 5.4 | Select valves, switching cuircit, ad interfaces |  | 5d | 2018-02-22 | 2018-02-26 |
| 33 | 5.5 | Find valves on Swedish vendor site | milestone | 0d | 2018-03-01 | 2018-03-01 |
| 34 | 5.6 | Order valves |  | 31d | 2018-03-02 | 2018-04-01 |
| 35 | 5.7 | Find all electrical sensors |  | 3d | 2018-03-05 | 2018-03-07 |
| 36 | 5.8 | Order sensors |  | 30d | 2018-02-08 | 2018-03-09 |
| 37 | 5.9 | Update initial/preliminary circtuit diagram |  | 2d | 2018-01-25 | 2018-01-26 |
| 38 | 5.10 | Define sensors |  | 2d | 2018-01-25 | 2018-01-26 |
| 39 | 5.11 | Create circuit diagram |  | 5d | 2018-02-27 | 2018-03-03 |
| 40 | 5.12 | Identify extra components |  | 2d | 2018-03-05 | 2018-03-06 |
| 41 | 5.13 | Define interfaces between EB, valve center, and CAC |  | 5d | 2018-02-28 | 2018-03-04 |
| 42 | 5.14 | Find extra components |  | 2d | 2018-03-07 | 2018-03-08 |
| 43 | 5.15 | Order extra components |  | 20d | 2018-03-20 | 2018-04-08 |
| 44 | 5.16 | Decide on number of PCBs |  | 9d | 2018-03-20 | 2018-03-28 |
| 45 | 5.17 | Design PCB |  | 10d | 2018-03-20 | 2018-03-29 |
| 46 | 5.18 | Power distribution circuit diagram |  | 5d | 2018-03-22 | 2018-03-26 |
| 47 | 5.19 | Figure out grounding |  | 10d | 2018-03-20 | 2018-03-29 |
| 48 | 5.20 | Confirm heating requirements, heater placement, number, size |  | 6d | 2018-03-12 | 2018-03-17 |
| 49 | 5.21 | Print PCB |  | 10d | 2018-05-15 | 2018-05-24 |
| 50 | 5.22 | Soldering PCB |  | 1d | 2018-06-01 | 2018-06-01 |
| 51 | 5.23 | **Testing** |  | 94d | 2018-03-12 | 2018-06-13 |
| 52 | 5.23.1 | Plan component testing |  | 2d | 2018-03-12 | 2018-03-13 |
| 53 | 5.23.2 | Test: pump, sample size, flow rate, time of sampling |  | 2d | 2018-04-13 | 2018-04-14 |
| 54 | 5.23.3 | Test: breadboard with Arduino, pump, and valves. |  | 2d | 2018-04-13 | 2018-04-14 |
| 55 | 5.23.4 | Test: breadboard with arduino and sensors |  | 2d | 2018-04-13 | 2018-04-14 |
| 56 | 5.23.5 | Test: check valves and connections |  | 2d | 2018-04-13 | 2018-04-14 |
| 57 | 5.23.6 | Test: check pump and connections |  | 5d | 2018-04-16 | 2018-04-20 |
| 58 | 5.23.7 | Test: check pump low pressure test with valves and bags |  | 5d | 2018-04-16 | 2018-04-20 |
| 59 | 5.23.8 | Test: thermal with emphasis on pumps and valves |  | 5d | 2018-04-16 | 2018-04-20 |
| 60 | 5.23.9 | Test: PCB, AAC, and CAC integration. Valve center. |  | 10d | 2018-06-04 | 2018-06-13 |
| 61 | 5.24 | Integration with Software |  | 15d | 2018-06-01 | 2018-06-15 |

| ID | WBS | Task | Type | Duration | Start | Finish |
| --- | --- | --- | --- | --- | --- | --- |
| 62 | 6 | **Software Division** |  | 114d | 2018-02-22 | 2018-06-15 |
| 63 | 6.1 | Acquire Arduino Due and ethernet shield |  | 15d | 2018-02-22 | 2018-03-08 |
| 64 | 6.2 | Design & record telecomand & telemetry package |  | 1d | 2018-02-27 | 2018-02-27 |
| 65 | 6.3 | Sequence diagram for telecommand | milestone | 0d | 2018-03-12 | 2018-03-12 |
| 66 | 6.4 | Sequence diagram for telemetry | milestone | 0d | 2018-03-12 | 2018-03-12 |
| 67 | 6.5 | Listing header file for sensors etc | milestone | 0d | 2018-02-26 | 2018-02-26 |
| 68 | 6.6 | Code sensors reading object |  | 2d | 2018-02-27 | 2018-02-28 |
| 69 | 6.7 | Code air sampling object |  | 5d | 2018-03-26 | 2018-03-30 |
| 70 | 6.8 | Code heating object |  | 13d | 2018-03-19 | 2018-03-31 |
| 71 | 6.9 | Apply watchdog and test it | milestone | 0d | 2018-04-01 | 2018-04-01 |
| 72 | 6.10 | Code rx/TX object |  | 14d | 2018-03-26 | 2018-04-08 |
| 73 | 6.11 | Make interface document (Pins) | milestone | 0d | 2018-04-29 | 2018-04-29 |
| 74 | 6.12 | Write ground section and code |  | 23d | 2018-04-01 | 2018-04-23 |
| 75 | 6.13 | Write GS manual |  | 8d | 2018-04-23 | 2018-04-30 |
| 76 | 6.14 | **Testing** |  | 35d | 2018-04-30 | 2018-06-03 |
| 77 | 6.14.1 | Test: GS-OBC connection |  | 7d | 2018-04-30 | 2018-05-06 |
| 78 | 6.14.2 | Test: GS can reprogram the software |  | 7d | 2018-05-07 | 2018-05-13 |
| 79 | 6.14.3 | Test: Running software for 10 hours (no overflows) |  | 7d | 2018-05-14 | 2018-05-20 |
| 80 | 6.14.4 | Test: Invalid commands for GS-OBC |  | 8d | 2018-05-20 | 2018-05-27 |
| 81 | 6.14.5 | Test: Integration testing |  | 7d | 2018-05-28 | 2018-06-03 |
| 82 | 6.15 | Integration with Electrical |  | 15d | 2018-06-01 | 2018-06-15 |
| 83 | 7 | **Mechanical Division** |  | 202d | 2018-02-26 | 2018-09-15 |
| 84 | 7.1 | Design the new configuration |  | 11d | 2018-02-26 | 2018-03-08 |
| 85 | 7.2 | Decide on locations of external connections |  | 11d | 2018-02-26 | 2018-03-08 |
| 86 | 7.3 | Agree on new designs with programme organizers |  | 11d | 2018-02-26 | 2018-03-08 |
| 87 | 7.4 | Design pipes |  | 5d | 2018-02-26 | 2018-03-02 |
| 88 | 7.5 | Find valves |  | 5d | 2018-02-26 | 2018-03-02 |
| 89 | 7.6 | Order valves |  | 15d | 2018-03-05 | 2018-03-19 |
| 90 | 7.7 | Label all figures in SED | milestone | 0d | 2018-02-26 | 2018-02-26 |
| 91 | 7.8 | Acquire styrofoam walls (payload protection) |  | 11d | 2018-05-11 | 2018-05-21 |
| 92 | 7.9 | Acquire aluminium sheet for the walls |  | 11d | 2018-05-11 | 2018-05-21 |
| 93 | 7.10 | Acquire polyethylene foam (thermal insulation) |  | 11d | 2018-05-11 | 2018-05-21 |
| 94 | 7.11 | Acquire experiment building components (e.g. screws) |  | 11d | 2018-05-11 | 2018-05-21 |
| 95 | 7.12 | Acquire frame bars REXROTH |  | 11d | 2018-05-11 | 2018-05-21 |
| 96 | 7.13 | Join the frame bars build structure |  | 21d | 2018-06-01 | 2018-06-21 |
| 97 | 7.14 | Build valve center (drill holes, attach valve, fix in the structure) |  | 21d | 2018-06-01 | 2018-06-21 |
| 98 | 7.15 | Attach the pipes |  | 5d | 2018-06-25 | 2018-06-29 |
| 99 | 7.16 | Build the walls (aluminium sheet, PE FOAM insulation sterofoam) |  | 5d | 2018-07-25 | 2018-07-29 |
| 100 | 7.17 | Make holes in the walls for the external connections |  | 5d | 2018-07-25 | 2018-07-29 |
| 101 | 7.18 | Attach the walls to the structure |  | 5d | 2018-07-25 | 2018-07-29 |

| ID | WBS | Task | Type | Duration | Start | Finish |
| --- | --- | --- | --- | --- | --- | --- |
| 102 | 7.19 | **Testing** |  | 46d | 2018-08-01 | 2018-09-15 |
| 103 | 7.19.1 | Test: vibration |  | 46d | 2018-08-01 | 2018-09-15 |
| 104 | 7.19.2 | Test: shock |  | 46d | 2018-08-01 | 2018-09-15 |
| 105 | 7.19.3 | Test: thermal |  | 46d | 2018-08-01 | 2018-09-15 |
| 106 | 7.19.4 | Test: styrofoam in vacuum |  | 46d | 2018-08-01 | 2018-09-15 |
| 107 | 7.19.5 | Test: mechanical interfaces |  | 46d | 2018-08-01 | 2018-09-15 |
| 108 | 8 | **Science Division** |  | 68d | 2018-02-22 | 2018-04-30 |
| 109 | 8.1 | Bags vs Canisters decision | milestone | 0d | 2018-02-23 | 2018-02-23 |
| 110 | 8.2 | Understand maths of sampling/test. Flow rate requirements |  | 3d | 2018-02-22 | 2018-02-24 |
| 111 | 8.3 | Similarity with LISA (the paper Lightweight Stratospheric Air Sample) | milestone | 0d | 2018-02-22 | 2018-02-22 |
| 112 | 8.4 | Calculate endothermal analysis (i.e. atmosphere and sun) | milestone | 0d | 2018-02-22 | 2018-02-22 |
| 113 | 8.5 | Obtain empirical model |  | 11d | 2018-03-02 | 2018-03-12 |
| 114 | 8.6 | Determing sampling altitudes | milestone | 0d | 2018-05-01 | 2018-05-01 |
| 115 | 9 | Thermal Diviion |  | 1d | 2018-02-01 | 2018-02-01 |
